# SmartCargo - Prima Release

Schedule from MS Project, 2023-10-16 to 2024-01-16, 1 hours a day, costs in €, A marks actual dates.

## Calendars

- SmartCargo_Calendar: Mon 12:30-14:00; Tue-Sun 16:00-17:00. Exceptions (off unless hours are given): 2023-12-24 to 2023-12-25 (Natale), 2023-12-31 to 2024-01-01 (Capodanno).

## Resources

| Resource | Rate |
| --- | --- |
| Francesco Ambrosio | 25 |
| Amedeo Napolitano | 25 |
| Mariapia Sorrentino | 25 |
| Paolo Murino | 25 |
| Roksana Duda | 25 |
| Andreea Crintea Oprisescu | 25 |

## Schedule

| ID | WBS | Task | Duration | Start | Finish | Predecessors | Complete | Baseline start | Baseline finish | Baseline duration | Resources | Work | Actual work | Cost | Baseline cost | Actual cost | descrizione |
| --- | --- | --- | --- | --- | --- | --- | --- | --- | --- | --- | --- | --- | --- | --- | --- | --- | --- |
| 1 | 1 | **Requirements Analysis Document** | 35.5d | 2023-11-14 A | 2023-12-09 A |  | 100% | 2023-11-14 | 2023-12-07 | 33.5d |  | 83.15h | 83.15h | 2,078.75 | 2,175 | 2,078.75 |  |
| 2 | 1.1 | **Requirements Elicitation** | 8d | 2023-11-14 A | 2023-11-21 A |  | 100% | 2023-11-14 | 2023-11-22 | 9d |  | 43h | 43h | 1,075 | 1,350 | 1,075 |  |
| 3 | 1.1.1 | **Introduzione e Sistema Corrente** | 1d | 2023-11-14 A | 2023-11-14 A |  | 100% | 2023-11-14 | 2023-11-14 | 1d |  | 6h | 6h | 150 | 150 | 150 |  |
| 4 | 1.1.1.1 | Scopo del sistema | 1d | 2023-11-14 A | 2023-11-14 A |  | 100% | 2023-11-14 | 2023-11-14 | 1d | Francesco Ambrosio [50%] | 0.5h | 0.5h | 12.5 | 12.5 | 12.5 | dcd |
| 5 | 1.1.1.2 | Ambito del sistema | 1d | 2023-11-14 A | 2023-11-14 A |  | 100% | 2023-11-14 | 2023-11-14 | 1d | Andreea Crintea Oprisescu [50%] | 0.5h | 0.5h | 12.5 | 12.5 | 12.5 |  |
| 6 | 1.1.1.3 | Obiettivi e criteri di successo | 1d | 2023-11-14 A | 2023-11-14 A |  | 100% | 2023-11-14 | 2023-11-14 | 1d | Amedeo Napolitano [50%] | 0.5h | 0.5h | 12.5 | 12.5 | 12.5 |  |
| 7 | 1.1.1.4 | Definizione, acronimi e abbreviazioni | 1d | 2023-11-14 A | 2023-11-14 A |  | 100% | 2023-11-14 | 2023-11-14 | 1d | Paolo Murino [50%] | 0.5h | 0.5h | 12.5 | 12.5 | 12.5 |  |
| 8 | 1.1.1.5 | Riferimenti | 1d | 2023-11-14 A | 2023-11-14 A |  | 100% | 2023-11-14 | 2023-11-14 | 1d | Roksana Duda [50%] | 0.5h | 0.5h | 12.5 | 12.5 | 12.5 |  |
| 9 | 1.1.1.6 | Organizzazione documento | 1d | 2023-11-14 A | 2023-11-14 A |  | 100% | 2023-11-14 | 2023-11-14 | 1d | Mariapia Sorrentino [50%] | 0.5h | 0.5h | 12.5 | 12.5 | 12.5 |  |
| 10 | 1.1.1.7 | **Sistema corrente** | 1d | 2023-11-14 A | 2023-11-14 A |  | 100% | 2023-11-14 | 2023-11-14 | 1d |  | 3h | 3h | 75 | 75 | 75 |  |
| 11 | 1.1.1.7.1 | Descrizione sistema corrente | 1d | 2023-11-14 A | 2023-11-14 A |  | 100% | 2023-11-14 | 2023-11-14 | 1d | Amedeo Napolitano [50%]; Andreea Crintea Oprisescu [50%]; Mariapia Sorrentino [50%] | 1.5h | 1.5h | 37.5 | 37.5 | 37.5 |  |
| 12 | 1.1.1.7.2 | Scenari AS-is | 1d | 2023-11-14 A | 2023-11-14 A |  | 100% | 2023-11-14 | 2023-11-14 | 1d | Francesco Ambrosio [50%]; Paolo Murino [50%]; Roksana Duda [50%] | 1.5h | 1.5h | 37.5 | 37.5 | 37.5 |  |
| 13 | 1.1.2 | **Sistema proposto** | 4d | 2023-11-15 A | 2023-11-18 A | 10 | 100% | 2023-11-15 | 2023-11-19 | 5d |  | 19h | 19h | 475 | 750 | 475 |  |
| 14 | 1.1.2.1 | Panoramica-Definizione attori del sistema | 1d | 2023-11-15 A | 2023-11-15 A |  | 100% | 2023-11-15 | 2023-11-15 | 1d | Amedeo Napolitano; Andreea Crintea Oprisescu; Francesco Ambrosio; Mariapia Sorrentino; Paolo Murino; Roksana Duda | 6h | 6h | 150 | 150 | 150 |  |
| 15 | 1.1.2.2 | Requisiti funzionali | 2d | 2023-11-16 A | 2023-11-17 A | 14 | 100% | 2023-11-16 | 2023-11-18 | 3d | Amedeo Napolitano [50%]; Andreea Crintea Oprisescu; Francesco Ambrosio [50%]; Mariapia Sorrentino [50%]; Paolo Murino [50%]; Roksana Duda [50%] | 7h | 7h | 175 | 450 | 175 |  |
| 16 | 1.1.2.3 | Requisiti non funzionali | 1d | 2023-11-18 A | 2023-11-18 A | 15 | 100% | 2023-11-19 | 2023-11-19 | 1d | Amedeo Napolitano; Andreea Crintea Oprisescu; Francesco Ambrosio; Mariapia Sorrentino; Paolo Murino; Roksana Duda | 6h | 6h | 150 | 150 | 150 |  |
| 17 | 1.1.3 | **Modello di Sistema** | 3d | 2023-11-19 A | 2023-11-21 A | 13 | 100% | 2023-11-20 | 2023-11-22 | 3d |  | 18h | 18h | 450 | 450 | 450 |  |
| 18 | 1.1.3.1 | User Story | 1d | 2023-11-19 A | 2023-11-19 A |  | 100% | 2023-11-20 | 2023-11-20 | 1d | Amedeo Napolitano; Andreea Crintea Oprisescu; Francesco Ambrosio; Mariapia Sorrentino; Paolo Murino; Roksana Duda | 6h | 6h | 150 | 150 | 150 |  |
| 19 | 1.1.3.2 | Scenari | 1d | 2023-11-20 A | 2023-11-20 A | 18 | 100% | 2023-11-20 | 2023-11-21 | 1d | Amedeo Napolitano; Andreea Crintea Oprisescu; Francesco Ambrosio; Mariapia Sorrentino; Paolo Murino; Roksana Duda | 6h | 6h | 150 | 150 | 150 |  |
| 20 | 1.1.3.3 | Use cases | 1d | 2023-11-20 A | 2023-11-21 A | 19 | 100% | 2023-11-21 | 2023-11-22 | 1d | Amedeo Napolitano; Andreea Crintea Oprisescu; Francesco Ambrosio; Mariapia Sorrentino; Paolo Murino; Roksana Duda | 6h | 6h | 150 | 150 | 150 |  |
| 21 | 1.2 | **Requirements Analysis** | 16.5d | 2023-11-21 A | 2023-12-06 A | 2 | 100% | 2023-11-22 | 2023-12-06 | 15.5d |  | 34.15h | 34.15h | 853.75 | 775 | 853.75 |  |
| 22 | 1.2.1 | **Modello ad oggetti** | 3d | 2023-11-21 A | 2023-11-24 A |  | 100% | 2023-11-22 | 2023-11-24 | 2d |  | 14.25h | 14.25h | 356.25 | 300 | 356.25 |  |
| 23 | 1.2.1.1 | Tabella degli oggetti | 2d | 2023-11-21 A | 2023-11-23 A |  | 100% | 2023-11-22 | 2023-11-24 | 2d | Amedeo Napolitano; Andreea Crintea Oprisescu; Roksana Duda | 6h | 6h | 150 | 150 | 150 |  |
| 24 | 1.2.1.2 | Class diagram | 3d | 2023-11-21 A | 2023-11-24 A |  | 100% | 2023-11-22 | 2023-11-24 | 2d | Francesco Ambrosio [75%]; Mariapia Sorrentino; Paolo Murino | 8.25h | 8.25h | 206.25 | 150 | 206.25 |  |

| ID | WBS | Task | Duration | Start | Finish | Predecessors | Complete | Baseline start | Baseline finish | Baseline duration | Constraint | Resources | Work | Actual work | Cost | Baseline cost | Actual cost |
| --- | --- | --- | --- | --- | --- | --- | --- | --- | --- | --- | --- | --- | --- | --- | --- | --- | --- |
| 25 | 1.2.2 | **Modello dinamico** | 3d | 2023-11-24 A | 2023-11-27 A | 22 | 100% | 2023-11-24 | 2023-11-27 | 3d |  |  | 10h | 10h | 250 | 250 | 250 |
| 26 | 1.2.2.1 | Sequence diagram | 2d | 2023-11-24 A | 2023-11-26 A |  | 100% | 2023-11-24 | 2023-11-26 | 2d |  | Amedeo Napolitano [50%]; Andreea Crintea Oprisescu [50%]; Francesco Ambrosio [50%]; Mariapia Sorrentino [50%]; Paolo Murino [50%]; Roksana Duda [50%] | 6h | 6h | 150 | 150 | 150 |
| 27 | 1.2.2.2 | Activity diagram | 1d | 2023-11-26 A | 2023-11-27 A | 26 | 100% | 2023-11-26 | 2023-11-27 | 1d |  | Amedeo Napolitano; Francesco Ambrosio | 2h | 2h | 50 | 50 | 50 |
| 28 | 1.2.2.3 | Statechart diagram | 1d | 2023-11-26 A | 2023-11-27 A | 26 | 100% | 2023-11-26 | 2023-11-27 | 1d |  | Mariapia Sorrentino [50%]; Paolo Murino [50%]; Roksana Duda [50%]; Andreea Crintea Oprisescu [50%] | 2h | 2h | 50 | 50 | 50 |
| 29 | 1.2.3 | **Navigational Path e Mock-up** | 2d | 2023-12-05 A | 2023-12-06 A | 25 | 100% | 2023-12-05 | 2023-12-06 | 2d |  |  | 9.9h | 9.9h | 247.5 | 225 | 247.5 |
| 30 | 1.2.3.1 | Navigational path | 1d | 2023-12-05 A | 2023-12-05 A |  | 100% | 2023-12-05 | 2023-12-05 | 1d | start no earlier than 2023-12-05 | Paolo Murino; Roksana Duda | 2h | 2h | 50 | 15 | 50 |
| 31 | 1.2.3.2 | Mock-up | 2d | 2023-12-05 A | 2023-12-06 A |  | 100% | 2023-12-05 | 2023-12-06 | 2d | start no earlier than 2023-12-05 | Amedeo Napolitano; Francesco Ambrosio [75%]; Andreea Crintea Oprisescu; Mariapia Sorrentino | 7.5h | 7.5h | 187.5 | 200 | 187.5 |
| 32 | 1.2.3.3 | Glossario | 1d | 2023-12-06 A | 2023-12-06 A | 30 | 100% | 2023-12-06 | 2023-12-06 | 1d |  | Paolo Murino [20%]; Roksana Duda [20%] | 0.4h | 0.4h | 10 | 10 | 10 |
| 33 | 1.3 | Revisione RAD | 3d | 2023-12-07 A | 2023-12-09 A | 2, 21, 30, 31, 32 | 100% | 2023-12-07 | 2023-12-07 | 1d |  | Paolo Murino; Roksana Duda | 6h | 6h | 150 | 50 | 150 |
| 34 | 2 | **System design** | 13.5d | 2023-11-28 A | 2023-12-10 A | 25FS+1d | 100% | 2023-11-28 | 2023-12-09 | 12d |  |  | 45h | 45h | 1,125 | 987.5 | 1,125 |
| 35 | 2.1 | **Introduzione e Architettura Software corrente** | 1d | 2023-11-28 A | 2023-11-28 A |  | 100% | 2023-11-28 | 2023-11-28 | 1d |  |  | 6.5h | 6.5h | 162.5 | 150 | 162.5 |
| 36 | 2.1.1 | Scopo del sistema | 1d | 2023-11-28 A | 2023-11-28 A |  | 100% | 2023-11-28 | 2023-11-28 | 1d |  | Andreea Crintea Oprisescu [20%] | 0.2h | 0.2h | 5 | 5 | 5 |
| 37 | 2.1.2 | Design goals | 1d | 2023-11-28 A | 2023-11-28 A |  | 100% | 2023-11-28 | 2023-11-28 | 1d |  | Mariapia Sorrentino; Paolo Murino; Francesco Ambrosio; Roksana Duda; Amedeo Napolitano | 5h | 5h | 125 | 125 | 125 |
| 38 | 2.1.3 | Definizione, Acronimi e Abbreviazioni | 1d | 2023-11-28 A | 2023-11-28 A |  | 100% | 2023-11-28 | 2023-11-28 | 1d |  | Andreea Crintea Oprisescu [10%] | 0.1h | 0.1h | 2.5 | 2.5 | 2.5 |
| 39 | 2.1.4 | Riferimenti | 1d | 2023-11-28 A | 2023-11-28 A |  | 100% | 2023-11-28 | 2023-11-28 | 1d |  | Andreea Crintea Oprisescu [10%] | 0.1h | 0.1h | 2.5 | 2.5 | 2.5 |
| 40 | 2.1.5 | Panoramica | 1d | 2023-11-28 A | 2023-11-28 A |  | 100% | 2023-11-28 | 2023-11-28 | 1d |  | Roksana Duda [10%] | 0.1h | 0.1h | 2.5 | 2.5 | 2.5 |
| 41 | 2.1.6 | Architettura Software corrente | 1d | 2023-11-28 A | 2023-11-28 A |  | 100% | 2023-11-28 | 2023-11-28 | 1d |  | Francesco Ambrosio | 1h | 1h | 25 | 12.5 | 25 |
| 42 | 2.2 | **Architettura Software proposta** | 5.5d | 2023-11-29 A | 2023-12-04 A | 35, 41 | 100% | 2023-11-29 | 2023-12-03 | 5d |  |  | 28.5h | 28.5h | 712.5 | 637.5 | 712.5 |
| 43 | 2.2.1 | Panoramica e Decomposizione in sotto-sistemi | 1d | 2023-11-29 A | 2023-11-29 A |  | 100% | 2023-11-29 | 2023-11-29 | 1d |  | Amedeo Napolitano; Andreea Crintea Oprisescu; Francesco Ambrosio; Mariapia Sorrentino; Paolo Murino; Roksana Duda | 6h | 6h | 150 | 150 | 150 |
| 44 | 2.2.2 | Mappatura Hardware e Software | 1d | 2023-11-30 A | 2023-11-30 A | 43 | 100% | 2023-11-30 | 2023-11-30 | 1d |  | Francesco Ambrosio [50%]; Roksana Duda [50%]; Amedeo Napolitano [50%] | 1.5h | 1.5h | 37.5 | 37.5 | 37.5 |
| 45 | 2.2.3 | Gestione dei dati persistenti | 2.5d | 2023-12-01 A | 2023-12-03 A | 44 | 100% | 2023-12-01 | 2023-12-02 | 2d |  | Andreea Crintea Oprisescu; Francesco Ambrosio; Mariapia Sorrentino; Paolo Murino; Roksana Duda; Amedeo Napolitano | 15h | 15h | 375 | 300 | 375 |
| 46 | 2.2.4 | Controllo del Sistema | 1d | 2023-12-03 A | 2023-12-04 A | 45 | 100% | 2023-12-03 | 2023-12-03 | 1d |  | Andreea Crintea Oprisescu [50%]; Mariapia Sorrentino [50%]; Paolo Murino [50%]; Amedeo Napolitano [50%]; Francesco Ambrosio [50%]; Roksana Duda [50%] | 3h | 3h | 75 | 75 | 75 |
| 47 | 2.2.5 | Condizioni limite | 1d | 2023-12-03 A | 2023-12-03 A |  | 100% | 2023-12-03 | 2023-12-03 | 1d | start no earlier than 2023-12-03 | Amedeo Napolitano [50%]; Andreea Crintea Oprisescu [50%]; Francesco Ambrosio [50%]; Mariapia Sorrentino [50%]; Paolo Murino [50%]; Roksana Duda [50%] | 3h | 3h | 75 | 75 | 75 |
| 48 | 2.3 | Servizi dei sottosistemi | 1d | 2023-12-04 A | 2023-12-04 A | 42 | 100% | 2023-12-04 | 2023-12-04 | 1d | start no earlier than 2023-12-04 | Amedeo Napolitano; Andreea Crintea Oprisescu; Francesco Ambrosio; Mariapia Sorrentino; Paolo Murino; Roksana Duda | 6h | 6h | 150 | 150 | 150 |
| 49 | 2.4 | Revisione SDD | 2d | 2023-12-09 A | 2023-12-10 A | 35, 42, 48FS+4d, 41 | 100% | 2023-12-08 | 2023-12-09 | 1d |  | Andreea Crintea Oprisescu; Mariapia Sorrentino | 4h | 4h | 100 | 50 | 100 |

| ID | WBS | Task | Type | Duration | Start | Finish | Predecessors | Complete | Baseline start | Baseline finish | Baseline duration | Constraint | Resources | Work | Actual work | Cost | Baseline cost | Actual cost |
| --- | --- | --- | --- | --- | --- | --- | --- | --- | --- | --- | --- | --- | --- | --- | --- | --- | --- | --- |
| 50 | 3 | **System test design** |  | 2d | 2023-12-11 A | 2023-12-12 A | 34 | 100% | 2023-12-11 | 2023-12-12 | 2d |  |  | 12h | 12h | 300 | 300 | 300 |
| 51 | 3.1 | Test case specification |  | 1d | 2023-12-11 A | 2023-12-11 A |  | 100% | 2023-12-11 | 2023-12-11 | 1d | start no earlier than 2023-10-16 | Amedeo Napolitano; Andreea Crintea Oprisescu; Francesco Ambrosio; Mariapia Sorrentino; Paolo Murino; Roksana Duda | 6h | 6h | 150 | 150 | 150 |
| 52 | 3.2 | Test Case con Category Partition |  | 1d | 2023-12-11 A | 2023-12-12 A | 51 | 100% | 2023-12-12 | 2023-12-12 | 1d | start no earlier than 2023-12-10 | Francesco Ambrosio; Amedeo Napolitano; Andreea Crintea Oprisescu; Mariapia Sorrentino; Paolo Murino; Roksana Duda | 6h | 6h | 150 | 150 | 150 |
| 53 | 4 | Consegna intermedia | milestone, manual | 0d | 2023-12-13 A | 2023-12-13 A | 1, 34, 50 | 100% | 2023-12-13 | 2023-12-13 | 0d |  |  |  |  |  |  |  |
| 54 | 5 | **Object design** |  | 7d | 2023-12-15 A | 2023-12-21 A | 53FS+2d | 100% | 2023-12-15 | 2023-12-21 | 7d |  |  | 30h | 30h | 750 | 750 | 750 |
| 55 | 5.1 | **Introduzione e Design Patterns** |  | 1d | 2023-12-15 A | 2023-12-15 A |  | 100% | 2023-12-15 | 2023-12-15 | 1d |  |  | 1h | 1h | 25 | 25 | 25 |
| 56 | 5.1.1 | Object Design Trade off |  | 1d | 2023-12-15 A | 2023-12-15 A |  | 100% | 2023-12-15 | 2023-12-15 | 1d |  | Mariapia Sorrentino [20%] | 0.2h | 0.2h | 5 | 5 | 5 |
| 57 | 5.1.2 | Interface Documentation GuideLines |  | 1d | 2023-12-15 A | 2023-12-15 A |  | 100% | 2023-12-15 | 2023-12-15 | 1d |  | Roksana Duda [20%] | 0.2h | 0.2h | 5 | 5 | 5 |
| 58 | 5.1.3 | Definizione, Acronimi e Abbreviazioni |  | 1d | 2023-12-15 A | 2023-12-15 A |  | 100% | 2023-12-15 | 2023-12-15 | 1d |  | Andreea Crintea Oprisescu [20%] | 0.2h | 0.2h | 5 | 5 | 5 |
| 59 | 5.1.4 | Riferimenti |  | 1d | 2023-12-15 A | 2023-12-15 A |  | 100% | 2023-12-15 | 2023-12-15 | 1d |  | Paolo Murino [20%] | 0.2h | 0.2h | 5 | 5 | 5 |
| 60 | 5.1.5 | Design Pattern |  | 1d | 2023-12-15 A | 2023-12-15 A |  | 100% | 2023-12-15 | 2023-12-15 | 1d |  | Paolo Murino [20%] | 0.2h | 0.2h | 5 | 5 | 5 |
| 61 | 5.2 | **Package** |  | 2d | 2023-12-16 A | 2023-12-17 A | 55 | 100% | 2023-12-16 | 2023-12-17 | 2d |  |  | 8h | 8h | 200 | 200 | 200 |
| 62 | 5.2.1 | Front-end |  | 2d | 2023-12-16 A | 2023-12-17 A |  | 100% | 2023-12-16 | 2023-12-17 | 2d |  | Amedeo Napolitano; Francesco Ambrosio | 4h | 4h | 100 | 100 | 100 |
| 63 | 5.2.2 | Back-end |  | 1d | 2023-12-16 A | 2023-12-16 A |  | 100% | 2023-12-16 | 2023-12-16 | 1d |  | Andreea Crintea Oprisescu; Mariapia Sorrentino; Paolo Murino; Roksana Duda | 4h | 4h | 100 | 100 | 100 |
| 64 | 5.3 | Class Interface e Class Diagram |  | 3d | 2023-12-18 A | 2023-12-20 A | 61 | 100% | 2023-12-18 | 2023-12-20 | 3d |  | Amedeo Napolitano; Andreea Crintea Oprisescu; Francesco Ambrosio; Mariapia Sorrentino; Paolo Murino; Roksana Duda | 18h | 18h | 450 | 450 | 450 |
| 65 | 5.4 | Revisione ODD |  | 1d | 2023-12-20 A | 2023-12-21 A | 55, 61, 64, 60 | 100% | 2023-12-20 | 2023-12-21 | 1d |  | Andreea Crintea Oprisescu; Francesco Ambrosio; Amedeo Napolitano | 3h | 3h | 75 | 75 | 75 |
| 66 | 6 | **Development** |  | 18d | 2023-12-21 A | 2024-01-11 A | 54 | 100% | 2023-12-21 | 2024-01-13 | 20d |  |  | 121h | 121h | 3,025 | 3,000 | 3,025 |
| 67 | 6.1 | Implementazione database |  | 3d | 2023-12-21 A | 2023-12-26 A |  | 100% | 2023-12-21 | 2023-12-26 | 3d |  | Andreea Crintea Oprisescu; Mariapia Sorrentino; Paolo Murino; Amedeo Napolitano; Francesco Ambrosio; Roksana Duda | 18h | 18h | 450 | 450 | 450 |
| 68 | 6.2 | Implementazione backend |  | 13d | 2023-12-26 A | 2024-01-09 A | 67 | 100% | 2023-12-26 | 2024-01-08 | 12d |  | Andreea Crintea Oprisescu [75%]; Mariapia Sorrentino [75%]; Paolo Murino [75%]; Roksana Duda [75%] | 39h | 39h | 975 | 900 | 975 |
| 69 | 6.3 | Implementazione algoritmo ML |  | 13d | 2023-12-26 A | 2024-01-09 A | 67 | 100% | 2023-12-26 | 2024-01-08 | 12d |  | Andreea Crintea Oprisescu [50%]; Mariapia Sorrentino [50%]; Paolo Murino [50%]; Roksana Duda [50%] | 26h | 26h | 650 | 300 | 650 |
| 70 | 6.4 | Implementazione frontend |  | 13d | 2023-12-26 A | 2024-01-09 A | 67 | 100% | 2023-12-26 | 2024-01-08 | 12d | start no earlier than 2023-12-24 | Amedeo Napolitano; Francesco Ambrosio | 26h | 26h | 650 | 600 | 650 |
| 71 | 6.5 | Manuale utente e installazione |  | 1d | 2024-01-10 A | 2024-01-10 A | 70 | 100% | 2024-01-09 | 2024-01-09 | 1d |  | Amedeo Napolitano; Andreea Crintea Oprisescu; Francesco Ambrosio; Mariapia Sorrentino; Paolo Murino; Roksana Duda | 6h | 6h | 150 | 150 | 150 |
| 72 | 6.6 | Implementazione classi di testing |  | 1d | 2024-01-11 A | 2024-01-11 A | 71 | 100% | 2024-01-10 | 2024-01-13 | 4d |  | Amedeo Napolitano; Andreea Crintea Oprisescu; Francesco Ambrosio; Mariapia Sorrentino; Paolo Murino; Roksana Duda | 6h | 6h | 150 | 600 | 150 |
| 73 | 7 | **Testing** |  | 3d | 2024-01-12 A | 2024-01-14 A |  | 100% | 2024-01-14 | 2024-01-16 | 3d |  |  | 18h | 18h | 450 | 450 | 450 |
| 74 | 7.1 | Esecuzione test di unità, integrazione e sistema |  | 1d | 2024-01-12 A | 2024-01-12 A | 72 | 100% | 2024-01-14 | 2024-01-14 | 1d |  | Amedeo Napolitano; Andreea Crintea Oprisescu; Francesco Ambrosio; Mariapia Sorrentino; Paolo Murino; Roksana Duda | 6h | 6h | 150 | 150 | 150 |
| 75 | 7.2 | Test incident report |  | 1d | 2024-01-13 A | 2024-01-13 A | 74 | 100% | 2024-01-15 | 2024-01-15 | 1d |  | Amedeo Napolitano; Andreea Crintea Oprisescu; Francesco Ambrosio; Mariapia Sorrentino; Paolo Murino; Roksana Duda | 6h | 6h | 150 | 150 | 150 |
| 76 | 7.3 | Test summary Report |  | 1d | 2024-01-14 A | 2024-01-14 A | 75 | 100% | 2024-01-15 | 2024-01-16 | 1d |  | Amedeo Napolitano; Andreea Crintea Oprisescu; Francesco Ambrosio; Mariapia Sorrentino; Paolo Murino; Roksana Duda | 6h | 6h | 150 | 150 | 150 |

| ID | WBS | Task | Type | Duration | Start | Finish | Predecessors | Complete | Baseline start | Baseline finish | Baseline duration | Constraint | Resources | Work | Actual work | Cost | Baseline cost | Actual cost |
| --- | --- | --- | --- | --- | --- | --- | --- | --- | --- | --- | --- | --- | --- | --- | --- | --- | --- | --- |
| 77 | 8 | **Meeting settimanale** |  | 92.5d | 2023-10-16 A | 2024-01-15 A |  | 100% | 2023-10-16 | 2024-01-15 | 92.5d |  |  | 72h | 72h | 1,800 | 1,800 | 1,800 |
| 78 | 8.1 | Meeting settimanale 1 | manual | 1d | 2023-10-16 A | 2023-10-16 A |  | 100% | 2023-10-16 | 2023-10-16 | 1d | start no earlier than 2023-10-16 | Amedeo Napolitano; Andreea Crintea Oprisescu; Francesco Ambrosio; Mariapia Sorrentino; Paolo Murino; Roksana Duda | 6h | 6h | 150 | 150 | 150 |
| 79 | 8.2 | Meeting settimanale 2 | manual | 1d | 2023-10-23 A | 2023-10-23 A |  | 100% | 2023-10-23 | 2023-10-23 | 1d | start no earlier than 2023-10-23 | Amedeo Napolitano; Andreea Crintea Oprisescu; Francesco Ambrosio; Mariapia Sorrentino; Paolo Murino; Roksana Duda | 6h | 6h | 150 | 150 | 150 |
| 80 | 8.3 | Meeting settimanale 3 | manual | 1d | 2023-10-30 A | 2023-10-30 A |  | 100% | 2023-10-30 | 2023-10-30 | 1d | start no earlier than 2023-10-30 | Amedeo Napolitano; Andreea Crintea Oprisescu; Francesco Ambrosio; Mariapia Sorrentino; Paolo Murino; Roksana Duda | 6h | 6h | 150 | 150 | 150 |
| 81 | 8.4 | Meeting settimanale 4 | manual | 1d | 2023-11-06 A | 2023-11-06 A |  | 100% | 2023-11-06 | 2023-11-06 | 1d | start no earlier than 2023-11-06 | Amedeo Napolitano; Andreea Crintea Oprisescu; Francesco Ambrosio; Mariapia Sorrentino; Paolo Murino; Roksana Duda | 6h | 6h | 150 | 150 | 150 |
| 82 | 8.5 | Meeting settimanale 5 | manual | 1d | 2023-11-13 A | 2023-11-13 A |  | 100% | 2023-11-13 | 2023-11-13 | 1d | start no earlier than 2023-11-13 | Amedeo Napolitano; Andreea Crintea Oprisescu; Francesco Ambrosio; Mariapia Sorrentino; Paolo Murino; Roksana Duda | 6h | 6h | 150 | 150 | 150 |
| 83 | 8.6 | Meeting settimanale 6 | manual | 1d | 2023-11-20 A | 2023-11-20 A |  | 100% | 2023-11-20 | 2023-11-20 | 1d | start no earlier than 2023-11-20 | Amedeo Napolitano; Andreea Crintea Oprisescu; Francesco Ambrosio; Mariapia Sorrentino; Paolo Murino; Roksana Duda | 6h | 6h | 150 | 150 | 150 |
| 84 | 8.7 | Meeting settimanale 7 | manual | 1d | 2023-11-27 A | 2023-11-27 A |  | 100% | 2023-11-27 | 2023-11-27 | 1d | start no earlier than 2023-11-27 | Amedeo Napolitano; Andreea Crintea Oprisescu; Francesco Ambrosio; Mariapia Sorrentino; Paolo Murino; Roksana Duda | 6h | 6h | 150 | 150 | 150 |
| 85 | 8.8 | Meeting settimanale 8 | manual | 1d | 2023-12-04 A | 2023-12-04 A |  | 100% | 2023-12-04 | 2023-12-04 | 1d | start no earlier than 2023-12-04 | Amedeo Napolitano; Andreea Crintea Oprisescu; Francesco Ambrosio; Mariapia Sorrentino; Paolo Murino; Roksana Duda | 6h | 6h | 150 | 150 | 150 |
| 86 | 8.9 | Meeting settimanale 9 | manual | 1d | 2023-12-11 A | 2023-12-11 A |  | 100% | 2023-12-11 | 2023-12-11 | 1d | start no earlier than 2023-12-11 | Amedeo Napolitano; Andreea Crintea Oprisescu; Francesco Ambrosio; Mariapia Sorrentino; Paolo Murino; Roksana Duda | 6h | 6h | 150 | 150 | 150 |
| 87 | 8.10 | Meeting settimanale 10 | manual | 1d | 2023-12-18 A | 2023-12-18 A |  | 100% | 2023-12-18 | 2023-12-18 | 1d | start no earlier than 2023-12-18 | Amedeo Napolitano; Andreea Crintea Oprisescu; Francesco Ambrosio; Mariapia Sorrentino; Paolo Murino; Roksana Duda | 6h | 6h | 150 | 150 | 150 |
| 88 | 8.11 | Meeting settimanale 11 | manual | 1d | 2024-01-08 A | 2024-01-08 A |  | 100% | 2024-01-08 | 2024-01-08 | 1d | start no earlier than 2024-01-08 | Amedeo Napolitano; Andreea Crintea Oprisescu; Francesco Ambrosio; Mariapia Sorrentino; Paolo Murino; Roksana Duda | 6h | 6h | 150 | 150 | 150 |
| 89 | 8.12 | Meeting settimanale 12 | manual | 1d | 2024-01-15 A | 2024-01-15 A |  | 100% | 2024-01-15 | 2024-01-15 | 1d | start no earlier than 2024-01-15 | Amedeo Napolitano; Andreea Crintea Oprisescu; Francesco Ambrosio; Mariapia Sorrentino; Paolo Murino; Roksana Duda | 6h | 6h | 150 | 150 | 150 |
| 90 | 9 | Consegna finale | milestone, manual | 0d | 2024-01-16 | 2024-01-16 | 76 |  | 2024-01-16 | 2024-01-16 | 0d |  |  |  |  |  |  |  |
